# 航空机票预订系统项目甘特图

Schedule from MS Project, 2005-09-21 to 2005-12-27, status date 2005-09-22, costs in ￥.
serc

## Calendars

- 标准: Mon-Fri 08:00-12:00, 13:00-17:00; Sat-Sun off.

## Resources

| Resource |
| --- |
| 李宁 |
| 刘京志 |
| 何玉洁 |
| 小张 |
| 胡景凡 |
| 张红 |
| 李艳平 |
| 张俊超 |

## Schedule

| ID | WBS | Task | Duration | Start | Finish | Predecessors | Total slack | Constraint | Resources | Work | Cost |
| --- | --- | --- | --- | --- | --- | --- | --- | --- | --- | --- | --- |
| 1 | 1 | **民航客运订票系统** | 70d | 2005-09-21 | 2005-12-27 |  | 0d |  |  | 952h | 262,330 |
| 2 | 1.1 | **系统规划** | 3d | 2005-09-21 | 2005-09-23 |  | 0d |  |  | 24h | 12,330 |
| 3 | 1.1.1 | 项目规划 | 2d | 2005-09-21 | 2005-09-22 |  | 0d |  | 李宁 | 16h | 1,220 |
| 4 | 1.1.2 | 计划评审 | 1d | 2005-09-23 | 2005-09-23 | 3 | 0d | finish no earlier than 2005-09-23 | 李宁 | 8h | 1,110 |
| 5 | 1.2 | **需求开发** | 15d | 2005-09-26 | 2005-10-14 | 2 | 0d |  |  | 272h |  |
| 6 | 1.2.1 | 详细用户需求获取 | 3d | 2005-09-26 | 2005-09-28 |  | 0d |  | 刘京志; 张俊超 | 48h |  |
| 7 | 1.2.2 | 用户需求评审 | 1d | 2005-09-29 | 2005-09-29 | 6 | 0d |  | 张红; 刘京志 | 16h |  |
| 8 | 1.2.3 | 需求分析及编写需求规格说明书 | 10d | 2005-09-30 | 2005-10-13 | 7 | 0d |  | 张俊超; 刘京志 | 160h |  |
| 9 | 1.2.4 | 需求评审 | 1d | 2005-10-14 | 2005-10-14 | 8 | 0d |  | 刘京志; 李宁; 何玉洁; 胡景凡; 张红; 李艳平 | 48h |  |
| 10 | 1.3 | **设计** | 15d | 2005-10-17 | 2005-11-04 | 5 | 0d |  |  | 216h |  |
| 11 | 1.3.1 | 概要设计 | 4d | 2005-10-17 | 2005-10-20 |  | 0d |  | 何玉洁; 张俊超; 李艳平 | 96h |  |
| 12 | 1.3.2 | 数据库设计 | 3d | 2005-10-21 | 2005-10-25 | 11 | 0d |  | 何玉洁; 张俊超 | 48h |  |
| 13 | 1.3.3 | 模块设计 | 7d | 2005-10-26 | 2005-11-03 | 12, 11 | 0d |  | 张俊超 | 56h |  |
| 14 | 1.3.4 | 设计评审 | 1d | 2005-11-04 | 2005-11-04 | 13 | 0d |  | 刘京志; 张红 | 16h |  |
| 15 | 1.4 | **实现** | 30d | 2005-11-07 | 2005-12-16 | 10 | 0d |  |  | 248h |  |
| 16 | 1.4.1 | 航班信息维护 | 3d | 2005-11-07 | 2005-11-09 |  | 0d |  | 张俊超 | 24h |  |
| 17 | 1.4.2 | 飞机信息维护 | 5d | 2005-11-10 | 2005-11-16 | 16 | 0d |  | 张俊超 | 40h |  |
| 18 | 1.4.3 | 客户资料维护 | 5d | 2005-11-17 | 2005-11-23 | 17 | 0d |  | 张俊超 | 40h |  |
| 19 | 1.4.4 | 航班信息查询 | 7d | 2005-11-24 | 2005-12-02 | 18 | 0d |  | 张俊超 | 56h |  |
| 20 | 1.4.5 | 订票 | 3d | 2005-12-05 | 2005-12-07 | 19 | 0d |  | 张俊超 | 24h |  |
| 21 | 1.4.6 | 出票 | 3d | 2005-12-08 | 2005-12-12 | 20 | 0d |  | 张俊超 | 24h |  |
| 22 | 1.4.7 | 退票 | 3d | 2005-12-13 | 2005-12-15 | 21 | 0d |  | 张俊超 | 24h |  |
| 23 | 1.4.8 | 评审 | 1d | 2005-12-16 | 2005-12-16 | 22 | 0d |  | 张红; 胡景凡 | 16h |  |
| 24 | 1.5 | **系统集成** | 4d | 2005-12-19 | 2005-12-22 | 15 | 0d |  |  | 72h |  |
| 25 | 1.5.1 | 集成测试 | 1d | 2005-12-19 | 2005-12-19 |  | 0d |  | 张红 | 8h |  |
| 26 | 1.5.2 | 系统测试 | 1d | 2005-12-20 | 2005-12-20 | 25 | 0d |  | 张红 | 8h |  |
| 27 | 1.5.3 | 用户测试 | 1d | 2005-12-21 | 2005-12-21 | 26 | 0d |  | 张红; 胡景凡; 李艳平 | 24h |  |
| 28 | 1.5.4 | 测试评审 | 1d | 2005-12-22 | 2005-12-22 | 27 | 0d |  | 张红; 胡景凡; 李宁; 刘京志 | 32h |  |

| ID | WBS | Task | Duration | Start | Finish | Predecessors | Total slack | Resources | Work |
| --- | --- | --- | --- | --- | --- | --- | --- | --- | --- |
| 29 | 1.6 | **提交** | 3d | 2005-12-23 | 2005-12-27 | 24 | 0d |  | 120h |
| 30 | 1.6.1 | 完成文档 | 2d | 2005-12-23 | 2005-12-26 |  | 0d | 李宁; 何玉洁; 刘京志; 胡景凡; 张红; 李艳平; 张俊超 | 112h |
| 31 | 1.6.2 | 验收 | 1d | 2005-12-27 | 2005-12-27 | 30 | 0d | 李宁 | 8h |
